# 防火墙替换项目整体周期

Schedule from a web Gantt chart, 2025-08-18 to 2025-09-02.
Saturdays and Sundays are off

## Schedule

| ID | WBS | Task | Type | Duration | Start | Finish | Predecessors | Status |
| --- | --- | --- | --- | --- | --- | --- | --- | --- |
| 2 | 1 | **调研阶段** |  | 4d | 2025-08-18 | 2025-08-21 |  |  |
| 3 | 1.1 | 调研工作启动会 |  | 1d | 2025-08-18 | 2025-08-18 |  |  |
| 4 | 1.2 | IDC网络环境调研 |  | 1d | 2025-08-18 | 2025-08-18 |  |  |
| 5 | 1.3 | 工厂网络环境调研 |  | 1d | 2025-08-19 | 2025-08-19 | 4 | waiting |
| 6 | 1.4 | 调研资料整理 |  | 1d | 2025-08-20 | 2025-08-20 | 5 | waiting |
| 7 | 1.5 | 调研工作确认会 |  | 1d | 2025-08-21 | 2025-08-21 | 6 | waiting |
| 8 | 2 | **方案设计阶段** |  | 5d | 2025-08-22 | 2025-08-28 |  |  |
| 9 | 2.1 | 方案设计工作启动会 |  | 1d | 2025-08-22 | 2025-08-22 |  |  |
| 10 | 2.2 | IDC防火墙网络优化设计 |  | 1d | 2025-08-22 | 2025-08-22 |  |  |
| 11 | 2.3 | 安全策略标准制定 |  | 1d | 2025-08-25 | 2025-08-25 | 10 | waiting |
| 12 | 2.4 | IDC安全策略优化设计 |  | 1d | 2025-08-26 | 2025-08-26 | 11 | waiting |
| 13 | 2.5 | 工厂/办公室防火墙安全策略优化设计 |  | 1d | 2025-08-27 | 2025-08-27 | 12 | waiting |
| 14 | 2.6 | 方案设计工作确认会 |  | 1d | 2025-08-28 | 2025-08-28 | 13 | waiting |
| 15 | 3 | **项目设计阶段** |  | 3d | 2025-08-29 | 2025-09-02 |  |  |
| 16 | 3.1 | 项目设计启动会 | fixed start | 1d | 2025-08-29 | 2025-08-29 |  |  |
| 17 | 3.2 | SDC上海防火墙clish脚本配置设计与测试 |  | 1d | 2025-08-29 | 2025-08-29 |  |  |
| 18 | 3.3 | CHC上海来福士中心防火墙脚本配置设计与测试 |  | 1d | 2025-09-01 | 2025-09-01 | 17 | waiting |
| 19 | 3.4 | ABAC上海前滩办公室防火墙脚本配置设计与测试 |  | 1d | 2025-09-02 | 2025-09-02 | 18 | waiting |
| 20 | 3.5 | ABAC江苏贸易公司（新如东）防火墙脚本配置设计与测试 |  | 1d | 2025-08-29 | 2025-08-29 |  |  |
| 21 | 3.6 | ABAC如东工厂防火墙脚本配置设计与测试 |  | 1d | 2025-08-29 | 2025-08-29 |  |  |
| 22 | 3.7 | ABAC陕西工厂防火墙脚本配置设计与测试 |  | 1d | 2025-08-29 | 2025-08-29 |  |  |
